# Предварительный план2007

Schedule from MS Project, 2013-04-22 to 2014-05-06, A marks actual dates.

## Calendars

- Стандартный: Mon-Fri 09:00-13:00, 14:00-18:00; Sat-Sun off. Exceptions (off unless hours are given): 2013-05-01 to 2013-05-05 (Первое мая), 2013-05-09 to 2013-05-12 (Девятое мая).

## Resources

| Resource |
| --- |
| Шилин Роман |
| Аналитик |
| Андрей Пирожков |
| Тугушев Илья |
| Денис Митавский |
| Java разработчик1 |
| Java разработчик2 |
| Валерий Мацукевич |
| Java разработчик3 |
| Java разработчик4 |
| WEB-дизайнер |
| Java разработчик |
| Андрей Цветков |
| Java разработчик5 |
| Тест Аналитик |
| Java разработчик6 |
| Тестировщик |
| Технический писатель |
| Технолог - администратор |
| Технический писатель2 |
| Системный аналитик1 |
| Системный аналитик2 |
| Системный аналитик3 |
| Системный аналитик4 |
| Владимир Панов |
| Сергей Кашанский |
| Роман Митинков |
| Роман |
| Глеб |
| Евгения Капустина |
| Эдуард Михайлов |

## Schedule

| ID | WBS | Task | Type | Duration | Start | Finish | Predecessors | Complete | Remaining | Total slack | Free slack | Constraint | Resources | Work | Actual work |
| --- | --- | --- | --- | --- | --- | --- | --- | --- | --- | --- | --- | --- | --- | --- | --- |
| 1 | 1 | **Разработка второй версии CM4/5** |  | 267d? | 2013-04-22 A | 2014-05-06 |  | 4% | 256.2d? | 0d |  |  |  | 26818.4h | 965.54h |
| 2 | 1.1 | Принято решение о начале разработки | milestone | 0d | 2013-04-22 | 2013-04-22 |  |  |  | 0d |  | start no earlier than 2013-04-22 |  |  |  |
| 3 | 1.2 | Управление проектом |  | 267d | 2013-04-22 | 2014-05-06 | 2 |  |  | 0d |  |  | Шилин Роман | 2136h |  |
| 4 | 1.3 | **Управление требованиями** |  | 193d | 2013-05-27 A | 2014-02-19 | 2 | 6% | 181.71d | 54d |  |  | Аналитик | 3463.2h | 178.34h |
| 5 | 1.3.1 | Выделен аналитик на проект | milestone | 0d | 2013-05-27 | 2013-05-27 |  |  |  | 235d |  | start no earlier than 2013-05-27 |  |  |  |
| 6 | 1.3.2 | Формирование скоупа проекта _ верхний уровень |  | 15d | 2013-05-27 A | 2013-06-14 | 5 | 73% | 4d | 54d | 0d |  | Евгения Капустина | 120h | 88h |
| 7 | 1.3.3 | Скоуп на систему сформирован и утвержден | milestone | 0d | 2013-06-21 | 2013-06-21 | 6FS+5d |  |  | 54d | 0d |  |  |  |  |
| 8 | 1.3.4 | Сопровождение требований |  | 173d | 2013-06-24 | 2014-02-19 | 5, 7 |  |  | 54d |  |  | Эдуард Михайлов; Евгения Капустина [30%] | 1799.2h |  |
| 9 | 1.4 | **Создание модуля "Делопроизводство" (документоориентированная среда)** |  | 210d? | 2013-04-22 A | 2014-02-14 |  | 6% | 197.09d? | 57d |  |  |  | 14618.4h | 787.2h |
| 10 | 1.4.1 | Первичные требования для создания модуля "Делопроизводство" подготовлены | milestone | 0d | 2013-04-22 | 2013-04-22 | 2 |  |  | 77.39d | 0d | finish no earlier than 2012-04-02 |  |  |  |
| 11 | 1.4.2 | **Апробация идей прототипа** |  | 24d | 2013-04-29 A | 2013-06-06 |  | 99% | 0d | 238d |  |  |  | 144h | 144h |
| 12 | 1.4.2.1 | Пирожков доступен | milestone | 0d | 2013-06-03 | 2013-06-03 |  |  |  | 242d |  | start no earlier than 2013-06-03 |  |  |  |
| 13 | 1.4.2.2 | Проведение предварительных испытаний системы |  | 9d | 2013-04-29 A | 2013-05-16 A | 10FS+5d | 100% |  |  |  |  | Андрей Цветков | 72h | 72h |
| 14 | 1.4.2.3 | Описание обработки ВХ. Док. На примере технологий прототипа |  | 9d | 2013-05-20 A | 2013-06-06 A |  | 100% |  |  |  | start no earlier than 2013-05-20 | Андрей Пирожков | 72h | 72h |
| 15 | 1.4.3 | **Настройка инфраструктуры** |  | 16d | 2013-05-20 A | 2013-06-10 | 23 | 58% | 6.67d | 70d | 0d |  |  | 96h | 56h |
| 16 | 1.4.3.1 | Настройка непрерывной интеграции |  | 4d | 2013-05-20 A | 2013-05-23 A |  | 100% |  |  |  |  | Тугушев Илья | 32h | 32h |
| 17 | 1.4.3.2 | Поддержка UNIT-тестирования и интеграционного тестирования на уроне среды непрерывной интеграции |  | 5d | 2013-06-04 | 2013-06-10 |  |  |  | 90d |  | start no earlier than 2013-06-04 | Тугушев Илья | 40h |  |
| 18 | 1.4.3.3 | Репакеджинг проекта |  | 3d | 2013-05-27 A | 2013-05-29 A |  | 100% |  |  |  | start no earlier than 2013-05-27 | Сергей Кашанский | 24h | 24h |
| 19 | 1.4.4 | **Проектирование и формирование ядра системы** |  | 130d | 2013-04-22 A | 2013-10-25 | 10 | 9% | 118.61d | 69d | 0d |  |  | 6286.4h | 587.2h |
| 20 | 1.4.4.1 | **Определение структуры модуля Делопроизводство** |  | 25d | 2013-04-22 A | 2013-05-31 A |  | 100% |  |  |  |  |  | 352h | 352h |
| 21 | 1.4.4.1.1 | Разбивка на слои |  | 5d | 2013-04-22 A | 2013-04-26 A |  | 100% |  |  |  |  | Денис Митавский [50%]; Андрей Пирожков [50%] | 40h | 40h |
| 22 | 1.4.4.1.2 | Конфигурации, загрузка и инициализация системы в базовой конфигурации |  | 5d | 2013-04-29 A | 2013-05-08 A | 21 | 100% |  |  |  |  | Валерий Мацукевич; Денис Митавский [50%] | 60h | 60h |
| 23 | 1.4.4.1.3 | Базовая конфигурация объектов системы |  | 5d | 2013-05-13 A | 2013-05-17 A | 21, 22 | 100% |  |  |  |  | Денис Митавский [50%]; Валерий Мацукевич | 60h | 60h |
| 24 | 1.4.4.1.4 | Юнит-тестирование - базис |  | 6d | 2013-05-17 A | 2013-05-24 A | 13 | 100% |  |  |  |  | Денис Митавский [50%]; Андрей Цветков | 72h | 72h |
| 25 | 1.4.4.1.5 | Базовая имплементация слоя DAO |  | 5d | 2013-05-20 A | 2013-05-24 A | 23 | 100% |  |  |  |  | Валерий Мацукевич | 40h | 40h |
| 26 | 1.4.4.1.6 | Обеспечение программных компонет верификации первой очереди |  | 5d | 2013-05-27 A | 2013-05-31 A | 25 | 100% |  |  |  |  | Валерий Мацукевич; Андрей Цветков | 80h | 80h |

Notes:
- 26: UNIT тестирование в рамках наработанного кода

| ID | WBS | Task | Type | Duration | Start | Finish | Predecessors | Complete | Remaining | Total slack | Free slack | Constraint | Resources | Work | Actual work |
| --- | --- | --- | --- | --- | --- | --- | --- | --- | --- | --- | --- | --- | --- | --- | --- |
| 27 | 1.4.4.2 | **DAO** |  | 22d | 2013-06-03 A | 2013-07-02 | 25, 26 | 60% | 8.8d | 152d |  |  |  | 280h | 211.2h |
| 28 | 1.4.4.2.1 | DAO для бизнес-объектов |  | 7d | 2013-06-03 A | 2013-06-11 |  | 86% | 1d | 49.2d | 0d |  | Андрей Цветков; Валерий Мацукевич | 112h | 96h |
| 29 | 1.4.4.2.2 | DAO для коллекций |  | 9d | 2013-06-12 A | 2013-06-24 | 28 | 80% | 1.8d | 42d | 0d |  | Андрей Цветков; Валерий Мацукевич | 144h | 115.2h |
| 30 | 1.4.4.2.3 | Функционал системы готов для проведения проектирования интеграции с GUI СМ4 | milestone | 0d | 2013-06-24 | 2013-06-24 | 28, 29 |  |  | 42d | 0d |  |  |  |  |
| 31 | 1.4.4.2.4 | DAO - утилитарные поля |  | 6d | 2013-06-25 | 2013-07-02 | 29 |  |  | 152d |  |  | Денис Митавский [50%] | 24h |  |
| 32 | 1.4.4.3 | CRUD-сервис для бизнес-объектов |  | 10d | 2013-06-11 | 2013-06-24 | 29FF |  |  | 93d | 0d |  | Андрей Цветков | 80h |  |
| 33 | 1.4.4.4 | Поддержка отсортированных дочерних бизнес-объектов |  | 5d | 2013-06-25 | 2013-07-01 | 32 |  |  | 153d |  |  | Валерий Мацукевич; Андрей Цветков | 80h |  |
| 34 | 1.4.4.5 | **Встроенный GUI** |  | 14d | 2013-05-30 | 2013-06-18 |  |  |  | 64d |  |  |  | 132h |  |
| 35 | 1.4.4.5.1 | Базис GUI |  | 5d | 2013-06-10 | 2013-06-14 |  |  |  | 164d |  | start no earlier than 2013-06-10 | Денис Митавский [50%] | 20h |  |
| 36 | 1.4.4.5.2 | Стилистическая адаптация компонентов GUI |  | 14d | 2013-05-30 | 2013-06-18 | 18 |  |  | 64d | 1d |  | Сергей Кашанский | 112h |  |
| 37 | 1.4.4.6 | **Права доступа** |  | 20d | 2013-06-12 A | 2013-07-09 |  | 11% | 17.86d | 122d | 43d |  |  | 224h | 12h |
| 38 | 1.4.4.6.1 | Права - оптимизация хранения (проектирование) |  | 10d | 2013-06-12 A | 2013-06-25 | 28 | 30% | 7d | 121d | 0d |  | Андрей Пирожков [50%] | 40h | 12h |
| 39 | 1.4.4.6.2 | Описание существующими декларативными средствами конфигурации |  | 8d | 2013-06-26 | 2013-07-05 | 38, 29FF |  |  | 124d |  |  | Валерий Мацукевич | 64h |  |
| 40 | 1.4.4.6.3 | Автофильтрация |  | 10d | 2013-06-26 | 2013-07-09 | 38, 29 |  |  | 121d | 0d |  | Денис Митавский [50%]; Роман Митинков | 120h |  |
| 41 | 1.4.4.7 | **Workflow - интеграция с Activiti** |  | 30d | 2013-06-07 A | 2013-07-18 | 14 | 10% | 27d | 62d | 0d |  |  | 280h | 12h |
| 42 | 1.4.4.7.1 | Проектирование |  | 10d | 2013-06-07 A | 2013-06-20 |  | 30% | 7d | 62d | 0d |  | Андрей Пирожков [50%] | 40h | 12h |
| 43 | 1.4.4.7.2 | Разработка |  | 20d | 2013-06-21 | 2013-07-18 | 42, 36 |  |  | 62d | 0d |  | Андрей Пирожков [50%]; Сергей Кашанский | 240h |  |
| 44 | 1.4.4.8 | Наследование/Аспекты |  | 20d | 2013-06-21 | 2013-07-18 | 42 |  |  | 140d |  |  | Андрей Пирожков [50%] | 80h |  |
| 45 | 1.4.4.9 | **Коллекции** |  | 26d | 2013-07-19 | 2013-08-23 |  |  |  | 69d | 10d |  |  | 348h |  |
| 46 | 1.4.4.9.1 | Коллекции - конфигурация |  | 3d | 2013-07-19 | 2013-07-23 | 43 |  |  | 69d | 0d |  | Андрей Пирожков | 24h |  |
| 47 | 1.4.4.9.2 | DAO - язык запросов коллекций |  | 12d | 2013-07-24 | 2013-08-08 | 46 |  |  | 79d | 0d |  | Сергей Кашанский; Андрей Пирожков [50%] | 144h |  |
| 48 | 1.4.4.9.3 | Сервис получения и получения счетчиков |  | 6d | 2013-08-09 | 2013-08-16 | 46, 47 |  |  | 94d |  |  | Андрей Пирожков [50%]; Сергей Кашанский | 48h |  |
| 49 | 1.4.4.9.4 | ПКД |  | 11d | 2013-08-09 | 2013-08-23 | 47 |  |  | 79d | 0d |  | Андрей Пирожков [50%]; Сергей Кашанский | 132h |  |
| 50 | 1.4.4.10 | **Действия** |  | 18d | 2013-07-24 | 2013-08-16 |  |  |  | 69d |  |  |  | 184h |  |
| 51 | 1.4.4.10.1 | Концепция |  | 4d | 2013-07-24 | 2013-07-29 | 46 |  |  | 69d | 0d |  | Андрей Пирожков [50%] | 16h |  |
| 52 | 1.4.4.10.2 | Реализация |  | 14d | 2013-07-30 | 2013-08-16 | 51 |  |  | 69d | 0d |  | Роман Митинков; Андрей Пирожков [50%] | 168h |  |

Notes:
- 32: - проектирование базового API / - имплементация
- 33: Для отображени и поддержания заданного порядка следования объектов
- 35: (логин, основной экран)
- 36: Верстка
- 38: Права доступа - оптимизация подхода, / подбор других названий сущностей (таблицы) переименовать таблицы и улучшить производительность
- 39: Права доступа - описание существующими декларативными средствами конфигурации / (для автоматического создания таблиц) + / конфигурирование под-запроса для фильтрации - там же
- 40: Права доступа - авто-фильтрация / + "внедрение в под-запросы"
- 41: Задачи: / - модель процесса (BPMN) / - Имплементация WF - сервиса , взаимодействие системы с Аctiviti
- 44: Архитектура - форма хранения данных (с учетом производительности) / -требуется вернуться к обсуждению
- 47: DAO - язык запросов коллекций
- 48: Коллекции - сервис получения и получения счетчиков
- 49: Для поддержания реализации избранного, отметок о прочтении и т.д.

| ID | WBS | Task | Duration | Start | Finish | Predecessors | Total slack | Free slack | Resources | Work |
| --- | --- | --- | --- | --- | --- | --- | --- | --- | --- | --- |
| 53 | 1.4.4.11 | **Формы встроенного GUI** | 26d | 2013-07-10 | 2013-08-14 |  | 121d |  |  | 264h |
| 54 | 1.4.4.11.1 | Конфигурация | 6d | 2013-07-10 | 2013-07-17 | 40 | 121d | 0d | Денис Митавский [50%] | 24h |
| 55 | 1.4.4.11.2 | API, сервис получения | 6d | 2013-07-18 | 2013-07-25 | 54 | 121d | 0d | Денис Митавский [50%]; Валерий Мацукевич | 72h |
| 56 | 1.4.4.11.3 | DAO форм | 14d | 2013-07-26 | 2013-08-14 | 55 | 121d |  | Денис Митавский [50%]; Валерий Мацукевич | 168h |
| 57 | 1.4.4.12 | **Слой сопряжения GUI CM4** | 53d | 2013-06-25 | 2013-09-05 |  | 42d |  |  | 965.6h |
| 58 | 1.4.4.12.1 | REST-протокол для АРМа - проектирование | 3d | 2013-06-25 | 2013-06-27 | 30 | 42d | 0d | Тугушев Илья; Денис Митавский [20%]; Андрей Пирожков [20%] | 33.6h |
| 59 | 1.4.4.12.2 | REST-протокол для АРМа - реализация | 50d | 2013-06-28 | 2013-09-05 | 58 | 42d | 0d | Тугушев Илья [33%]; Роман; Глеб | 932h |
| 60 | 1.4.4.13 | **Поиск** | 26d | 2013-06-25 | 2013-07-30 | 32 | 93d |  |  | 436h |
| 61 | 1.4.4.13.1 | Поиск | 15d | 2013-06-25 | 2013-07-15 |  | 99d | 5d | Денис Митавский [50%]; Андрей Цветков | 180h |
| 62 | 1.4.4.13.2 | Полнотекстовый поиск | 20d | 2013-06-25 | 2013-07-22 |  | 93d | 0d | Java разработчик | 160h |
| 63 | 1.4.4.13.3 | Расширенный поиск | 6d | 2013-07-23 | 2013-07-30 | 61, 62 | 94d | 0d | Денис Митавский; Андрей Цветков | 96h |
| 64 | 1.4.4.14 | **Работа с отчетами** | 23d | 2013-08-26 | 2013-09-25 |  | 81d |  |  | 276h |
| 65 | 1.4.4.14.1 | JDBC-драйвер для системы построения отчётов | 8d | 2013-08-26 | 2013-09-04 | 49 | 81d | 0d | Денис Митавский [50%]; Андрей Цветков | 96h |
| 66 | 1.4.4.14.2 | Интеграция с Jasper Reports | 15d | 2013-09-05 | 2013-09-25 | 65 | 81d | 0d | Денис Митавский [50%]; Андрей Цветков | 180h |
| 67 | 1.4.4.15 | **Компоненты GUI** | 49d | 2013-07-31 | 2013-10-07 |  | 81d | 0d |  | 912.8h |
| 68 | 1.4.4.15.1 | GUI - архитектура активностей/дочерних активностей | 10d | 2013-08-09 | 2013-08-22 | 47, 62 | 80d | 0d | Денис Митавский [50%] | 40h |
| 69 | 1.4.4.15.2 | GUI - панель навигации | 10d | 2013-08-26 | 2013-09-06 | 49, 68 | 79d | 0d | Денис Митавский [50%]; Java разработчик | 120h |
| 70 | 1.4.4.15.3 | GUI - отображение коллекций активность | 10d | 2013-08-23 | 2013-09-05 | 68 | 103d |  | Тугушев Илья [33%]; Роман | 106.4h |
| 71 | 1.4.4.15.4 | GUI - отображение отчётов | 8d | 2013-09-26 | 2013-10-07 | 68, 66 | 81d |  | Андрей Цветков | 64h |
| 72 | 1.4.4.15.5 | GUI - действия | 10d | 2013-08-23 | 2013-09-05 | 68 | 103d |  | Тугушев Илья [33%]; Глеб | 106.4h |
| 73 | 1.4.4.15.6 | GUI - конфигурируемые формы проектирование | 3d | 2013-07-31 | 2013-08-02 | 63 | 94d | 0d | Денис Митавский [50%] | 12h |
| 74 | 1.4.4.15.7 | GUI - конфигурируемые формы реализация | 8d | 2013-08-05 | 2013-08-14 | 73 | 94d | 0d | Валерий Мацукевич | 64h |
| 75 | 1.4.4.15.8 | GUI - виджеты разработка (базовый набор) | 25d | 2013-08-15 | 2013-09-18 | 74 | 94d |  | Роман; Глеб | 400h |
| 76 | 1.4.4.16 | Тестирование производительности | 25d | 2013-09-09 | 2013-10-11 | 37, 32, 45, 69, 74 | 79d |  | Денис Митавский; Валерий Мацукевич | 400h |
| 77 | 1.4.4.17 | Версионность/аудит | 8d | 2013-08-19 | 2013-08-28 | 32, 52 | 69d | 0d | Сергей Кашанский | 64h |
| 78 | 1.4.4.18 | Блокировки бизнес-объектов | 6d | 2013-08-29 | 2013-09-05 | 77 | 69d | 0d | Сергей Кашанский | 48h |
| 79 | 1.4.4.19 | Описание структуры модуля Делопроизводство | 20d | 2013-06-11 | 2013-07-08 | 20, 15, 14 | 70d | 8d | Владимир Панов | 160h |
| 80 | 1.4.4.20 | Уточнение состава и сроков работ | 2d | 2013-10-08 | 2013-10-09 | 67 | 81d |  | Андрей Пирожков; Денис Митавский; Тугушев Илья | 48h |
| 81 | 1.4.4.21 | Кросс-СУБД, поддержка Oracle | 15d | 2013-09-06 | 2013-09-26 | 78 | 69d | 0d | Роман Митинков | 120h |
| 82 | 1.4.4.22 | SQL-trace | 5d | 2013-09-27 | 2013-10-03 | 81 | 70d | 0d | Java разработчик | 40h |
| 83 | 1.4.4.23 | Локализация (на уровне конфигурации) | 15d | 2013-10-04 | 2013-10-24 | 82 | 70d |  | Java разработчик | 120h |

Notes:
- 56: получение форм
- 59: Начальная реализация модуля "документооборот"
- 62: Включая взаимодействие с Solr
- 63: C учетом релевантности и оптимизации по объедененеию поисков аттрибутивного и полнотекстового
- 65: Используя язык запросов коллеций
- 69: Отображение и конфигурация + API для получения
- 70: отображающая коллекцию должна иметь возможность быть сконфигурированной так, чтобы мэппить значения некоторых колонок в картинки
- 76: - полноценное, продуманное, конфигурируемое, полностью автоматизированное (вплоть до промежуточного сбора статистики в СУБД перед запуском тестов производительности) с автоматической генерацией таблиц и графиков, с поддержкой нагружающих потоков и т.п.
- 77: История модификации объекта / Версионность - на бизнес слой
- 81: Кросс-СУБД, поддержка Oracle
- 83: Поддержка ресурсных файлов - в расках конфигурирования ресурсных файлов / Подмена языка в интерфейсе (передача локали пользоввателю) -

| ID | WBS | Task | Duration | Start | Finish | Predecessors | Total slack | Free slack | Resources | Work |
| --- | --- | --- | --- | --- | --- | --- | --- | --- | --- | --- |
| 84 | 1.4.4.24 | **Интеграция с системой управления учетными записями** | 14d | 2013-09-06 | 2013-09-25 | 78 | 91d |  |  | 56h |
| 85 | 1.4.4.24.1 | Интеграция с ActiveDirectory | 14d | 2013-09-06 | 2013-09-25 |  | 91d |  | Андрей Пирожков [50%] | 56h |
| 86 | 1.4.4.25 | **Расширение функций сервиса конфигурации** | 21d | 2013-09-27 | 2013-10-25 | 68, 81 | 69d |  |  | 336h |
| 87 | 1.4.4.25.1 | Точки расширения | 5d | 2013-09-27 | 2013-10-03 | 25 | 69d | 0d | Андрей Пирожков; Роман Митинков | 80h |
| 88 | 1.4.4.25.2 | Изменение и дополнение конфигурации системы | 16d | 2013-10-04 | 2013-10-25 | 87 | 69d |  | Андрей Пирожков; Роман Митинков | 256h |
| 89 | 1.4.5 | **Разработка** | 139d | 2013-06-11 | 2013-12-20 | 15 | 90d |  |  | 4908h |
| 90 | 1.4.5.1 | Контроль и корректировка технических решений "Архитектурный комитет" | 139d | 2013-06-11 | 2013-12-20 |  | 97d |  | Тугушев Илья [20%]; Андрей Пирожков [20%]; Денис Митавский [20%]; WEB-дизайнер [20%]; Аналитик [20%]; Владимир Панов [50%] | 1668h |
| 91 | 1.4.5.2 | **Разработка серверной логики модуля Делопроизводство** | 40d | 2013-07-19 | 2013-09-12 | 15, 41, 79 | 62d |  |  | 1280h |
| 92 | 1.4.5.2.1 | Разработка схем документов модуля Делопроизводство | 20d | 2013-07-19 | 2013-08-15 |  | 62d | 0d | Андрей Пирожков [50%]; Java разработчик | 240h |
| 93 | 1.4.5.2.2 | Разработка ЖЦ процессов модуля (WF) | 20d | 2013-08-16 | 2013-09-12 | 92 | 80d | 0d | Java разработчик; Андрей Пирожков [50%] | 240h |
| 94 | 1.4.5.2.3 | Разработка логики бизнес- действий модуля "Делопроизводство" | 40d | 2013-07-19 | 2013-09-12 |  | 80d | 0d | Java разработчик1; Андрей Пирожков [50%] | 480h |
| 95 | 1.4.5.2.4 | Разработка процессов автоматизации для модуля "Делопроизводство" | 20d | 2013-07-19 | 2013-08-15 |  | 188d |  | Java разработчик2 | 160h |
| 96 | 1.4.5.2.5 | Разработка модели прав доступа (контекстные роли) | 20d | 2013-08-16 | 2013-09-12 | 92 | 168d |  | Java разработчик2 | 160h |
| 97 | 1.4.5.3 | **Разработка клиентской логики модуля "Делопроизводство"** | 10d | 2013-09-06 | 2013-09-19 | 59 | 42d | 0d |  | 160h |
| 98 | 1.4.5.3.1 | Разработка форм для работы с документами в GUI (настройки форм) | 5d | 2013-09-06 | 2013-09-12 |  | 42d | 0d | Java разработчик3 | 40h |
| 99 | 1.4.5.3.2 | Разработка структуры рабочего места | 5d | 2013-09-13 | 2013-09-19 | 92, 98 | 42d |  | Java разработчик3 | 40h |
| 100 | 1.4.5.3.3 | Разработка специфичных для модуля форм элементов GUI | 10d | 2013-09-06 | 2013-09-19 |  | 42d |  | Java разработчик4 | 80h |
| 101 | 1.4.5.4 | **Подготовка работы со списками значений** | 40d | 2013-09-20 | 2013-11-14 |  | 123d |  |  | 640h |
| 102 | 1.4.5.4.1 | Разработка функционала учета организационно штатной структуры | 40d | 2013-09-20 | 2013-11-14 | 97 | 123d |  | Андрей Цветков | 320h |
| 103 | 1.4.5.4.2 | Разработка функционала с рубрикаторами (сложные справочники) | 20d | 2013-09-20 | 2013-10-17 | 97 | 123d | 0d | Валерий Мацукевич | 160h |
| 104 | 1.4.5.4.3 | Разработка функционала для работы с словарями данных (простые, линейные справочники) | 20d | 2013-10-18 | 2013-11-14 | 103 | 123d |  | Валерий Мацукевич | 160h |
| 105 | 1.4.5.5 | Подготовка отчетов | 40d | 2013-09-13 | 2013-11-07 | 92, 94, 93 | 80d | 6d | Java разработчик; Java разработчик1; Java разработчик2 | 960h |
| 106 | 1.4.5.6 | Сопряжение с мобильным клиентом СМ4 | 25d | 2013-09-20 | 2013-10-24 | 97 | 138d |  | Java разработчик3 | 200h |
| 107 | 1.4.6 | **Тестирование** | 68d? | 2013-10-28 | 2014-01-29 | 19 | 69d | 0d |  | 2544h |
| 108 | 1.4.6.1 | **Функциональное тестирование** | 53d? | 2013-10-28 | 2014-01-08 |  | 69d |  |  | 2224h |
| 109 | 1.4.6.1.1 | Подготовка ПМИ | 5d | 2013-10-28 | 2013-11-01 |  | 69d | 0d | Тест Аналитик | 40h |
| 110 | 1.4.6.1.2 | Разработка "сценариев тестирования" | 15d | 2013-10-28 | 2013-11-15 |  | 69d | 0d | Тест Аналитик | 120h |
| 111 | 1.4.6.1.3 | Разработка модели нагрузки для тестирования | 10d | 2013-11-04 | 2013-11-15 | 109 | 69d | 0d | Тест Аналитик | 80h |
| 112 | 1.4.6.1.4 | Адаптация автоматизированных сценариев от СМ4 для создания нагрузки | 25d | 2013-11-04 | 2013-12-06 | 109 | 69d | 0d | Java разработчик | 200h |

Notes:
- 87: перенос идеи из прототипа

| ID | WBS | Task | Type | Duration | Start | Finish | Predecessors | Total slack | Free slack | Constraint | Resources | Work |
| --- | --- | --- | --- | --- | --- | --- | --- | --- | --- | --- | --- | --- |
| 113 | 1.4.6.1.5 | **Проведение тестирования** |  | 38d? | 2013-11-18 | 2014-01-08 | 110, 111 | 74d | 0d |  |  | 1784h |
| 114 | 1.4.6.1.5.1 | **Подготовка среды тестирования** |  | 10d? | 2013-11-18 | 2013-11-29 |  | 74d |  |  |  | 200h |
| 115 | 1.4.6.1.5.1.1 | Разворачивание системы |  | 5d? | 2013-11-18 | 2013-11-22 | 117SF | 117d | 0d |  | Java разработчик | 40h |
| 116 | 1.4.6.1.5.1.2 | Система готова для подключения инструментов мониторинга | milestone | 0d | 2013-11-22 | 2013-11-22 | 115 | 117d |  |  |  |  |
| 117 | 1.4.6.1.5.1.3 | Наполнение данными |  | 10d? | 2013-11-18 | 2013-11-29 | 105 | 74d | 5d |  | Java разработчик; Java разработчик6 | 160h |
| 118 | 1.4.6.1.5.2 | Среда тестирования готова | milestone | 0d | 2013-12-06 | 2013-12-06 | 117, 112 | 69d | 0d | start no earlier than 2012-05-24 |  |  |
| 119 | 1.4.6.1.5.3 | Проведение тестирования |  | 10d | 2013-12-09 | 2013-12-20 | 118 | 69d | 0d |  | Тест Аналитик; Тестировщик [200%] | 240h |
| 120 | 1.4.6.1.5.4 | **Обработка результатов тестирования и внесение изменений в модуль** |  | 15d | 2013-12-19 | 2014-01-08 | 119FS-2d | 69d |  |  |  | 1344h |
| 121 | 1.4.6.1.5.4.1 | Устранение замечаний по результатам функционального тестирования |  | 15d | 2013-12-19 | 2014-01-08 |  | 69d | 0d |  | Java разработчик5; Java разработчик [300%]; Валерий Мацукевич; Java разработчик3; Java разработчик4; Java разработчик2; Java разработчик1; Андрей Цветков | 1200h |
| 122 | 1.4.6.1.5.4.2 | Проверка устранения замечаний |  | 6d | 2014-01-01 | 2014-01-08 | 121FS-6d | 69d | 0d |  | Тест Аналитик; Тестировщик [200%] | 144h |
| 123 | 1.4.6.2 | **Нагрузочное тестирование** |  | 28d | 2013-12-20 | 2014-01-29 | 109 | 69d |  |  |  | 320h |
| 124 | 1.4.6.2.1 | Стенд для нагрузочного тестирования подготовлен | milestone | 0d | 2013-12-20 | 2013-12-20 | 119 | 82d | 13d | finish no earlier than 2012-06-09 |  |  |
| 125 | 1.4.6.2.2 | Проведения нагрузочного тестирования |  | 10d | 2014-01-09 | 2014-01-22 | 122, 112, 124 | 69d | 0d |  | Java разработчик; Тест Аналитик; Тестировщик | 240h |
| 126 | 1.4.6.2.3 | Обработка результатов нагрузочного тестирования |  | 5d | 2014-01-23 | 2014-01-29 | 125 | 69d |  |  | Тест Аналитик; Тестировщик | 80h |
| 127 | 1.4.7 | Разработка модуля "Делопроизводство" завершена | milestone | 0d | 2014-01-29 | 2014-01-29 | 107 | 69d |  |  |  |  |
| 128 | 1.4.8 | **Подготовка документации** |  | 80d | 2013-10-28 | 2014-02-14 | 107SS | 57d |  |  |  | 640h |
| 129 | 1.4.8.1 | Разработка документа "Концепция системы " |  | 40d | 2013-10-28 | 2013-12-20 |  | 57d | 0d |  | Владимир Панов | 320h |
| 130 | 1.4.8.2 | Разработка "Software Architecture Document" |  | 40d | 2013-12-23 | 2014-02-14 | 129 | 57d | 0d |  | Владимир Панов | 320h |
| 131 | 1.4.8.3 | Документы подготовлены | milestone | 0d | 2014-02-14 | 2014-02-14 | 130 | 57d |  |  |  |  |
| 132 | 1.5 | **Проверка работоспособности решения - Организация демонстрации** |  | 25d? | 2013-11-18 | 2013-12-20 | 113SS | 97d |  |  |  | 448h |
| 133 | 1.5.1 | Подготовка стенда |  | 3d | 2013-11-18 | 2013-11-20 | 134SF | 119d |  |  | Java разработчик; Аналитик | 48h |
| 134 | 1.5.2 | Подготовка прототипа |  | 20d? | 2013-11-18 | 2013-12-13 |  | 97d | 0d |  | Java разработчик; Аналитик | 320h |
| 135 | 1.5.3 | Проведение демонстраций |  | 3d | 2013-12-16 | 2013-12-18 | 134 | 97d | 0d |  | Java разработчик; Аналитик | 48h |
| 136 | 1.5.4 | Анализ результатов - выводы |  | 2d | 2013-12-19 | 2013-12-20 | 135 | 97d |  |  | Java разработчик; Аналитик | 32h |

| ID | WBS | Task | Type | Duration | Start | Finish | Predecessors | Total slack | Free slack | Constraint | Resources | Work |
| --- | --- | --- | --- | --- | --- | --- | --- | --- | --- | --- | --- | --- |
| 137 | 1.6 | **Создание модулей первой очереди** |  | 111d? | 2013-10-03 | 2014-03-07 |  | 42d |  |  |  | 6152.8h |
| 138 | 1.6.1 | Определен состав модулей первой очереди и первичные требования подготовлены | milestone | 0d | 2013-10-03 | 2013-10-03 | 97FS+10d | 42d | 0d | finish no earlier than 2012-04-02 |  |  |
| 139 | 1.6.2 | **Проектирование** |  | 18.33d | 2013-10-04 | 2013-10-30 | 138 | 42d | 0d |  |  | 480h |
| 140 | 1.6.2.1 | Определение структуры модулей первой очереди |  | 13d | 2013-10-04 | 2013-10-22 |  | 42d | 0d |  | Андрей Пирожков; Тугушев Илья; Денис Митавский; WEB-дизайнер | 416h |
| 141 | 1.6.2.2 | Уточнение состава и сроков работ |  | 5.33d | 2013-10-23 | 2013-10-30 | 140 | 56.67d |  |  | Тугушев Илья [50%]; Андрей Пирожков [50%]; Денис Митавский [50%] | 64h |
| 142 | 1.6.3 | Принято решение о разработке модулей второй очереди | milestone | 0d | 2013-10-22 | 2013-10-22 | 140 | 42d | 0d | finish no earlier than 2012-05-21 |  |  |
| 143 | 1.6.4 | **Разработка** |  | 40d | 2013-10-23 | 2013-12-17 | 142 | 42d |  |  |  | 2864.8h |
| 144 | 1.6.4.1 | Контроль и корректировка технических решений "Архитектурный комитет" |  | 37d | 2013-10-23 | 2013-12-12 |  | 103d |  |  | Тугушев Илья [10%]; Андрей Пирожков [10%]; Денис Митавский [10%]; WEB-дизайнер | 384.8h |
| 145 | 1.6.4.2 | **Разработка серверной логики модулей первой очереди** |  | 40d | 2013-10-23 | 2013-12-17 |  | 42d | 0d |  |  | 1600h |
| 146 | 1.6.4.2.1 | Разработка схем документов для модулей первой очереди |  | 20d | 2013-10-23 | 2013-11-19 |  | 42d | 0d |  | Java разработчик2; Java разработчик | 320h |
| 147 | 1.6.4.2.2 | Разработка ЖЦ процессов (WF) |  | 20d | 2013-11-20 | 2013-12-17 | 146 | 42d |  |  | Java разработчик2; Java разработчик | 320h |
| 148 | 1.6.4.2.3 | Разработка логики бизнес- действий для модулей первой очереди |  | 40d | 2013-10-23 | 2013-12-17 |  | 42d |  |  | Java разработчик1; Java разработчик | 640h |
| 149 | 1.6.4.2.4 | Разработка процессов автоматизации для модулей первой очереди |  | 20d | 2013-10-23 | 2013-11-19 |  | 62d |  |  | Java разработчик | 160h |
| 150 | 1.6.4.2.5 | Разработка модели прав доступа (контекстные роли) |  | 20d | 2013-11-20 | 2013-12-17 | 146 | 42d |  |  | Java разработчик | 160h |
| 151 | 1.6.4.3 | **Разработка клиентской логики модулей первой очереди** |  | 30d | 2013-10-23 | 2013-12-03 |  | 52d | 10d |  |  | 320h |
| 152 | 1.6.4.3.1 | Разработка форм для работы с документами в GUI (настройки форм) |  | 10d | 2013-10-23 | 2013-11-05 |  | 72d |  |  | Java разработчик3 | 80h |
| 153 | 1.6.4.3.2 | Разработка структуры рабочего места |  | 10d | 2013-11-20 | 2013-12-03 | 146 | 52d |  |  | Java разработчик3 | 80h |
| 154 | 1.6.4.3.3 | Разработка специфичных для модуля форм элементов GUI |  | 20d | 2013-10-23 | 2013-11-19 |  | 62d |  |  | Java разработчик4 | 160h |
| 155 | 1.6.4.4 | **Разработка вспомогательного инструментария** |  | 20d | 2013-10-30 | 2013-11-27 |  | 56.67d | 14.67d |  |  | 400h |
| 156 | 1.6.4.4.1 | Построитель форм |  | 10d | 2013-10-30 | 2013-11-13 | 139 | 66.67d |  |  | Андрей Цветков | 80h |
| 157 | 1.6.4.4.2 | Разработка инсталлятора |  | 20d | 2013-10-30 | 2013-11-27 | 139 | 56.67d |  |  | Валерий Мацукевич | 160h |
| 158 | 1.6.4.4.3 | Разработка конфигуратора |  | 10d | 2013-10-30 | 2013-11-13 | 139 | 66.67d |  |  | Java разработчик5; Java разработчик | 160h |
| 159 | 1.6.4.5 | Подготовка отчетов |  | 20d | 2013-10-23 | 2013-11-19 |  | 120d |  |  | Java разработчик | 160h |
| 160 | 1.6.5 | Сборка модулей первой очереди завершена | milestone | 0d | 2013-12-17 | 2013-12-17 | 145, 151, 155 | 42d | 0d |  |  |  |

| ID | WBS | Task | Type | Duration | Start | Finish | Predecessors | Total slack | Free slack | Constraint | Resources | Work |
| --- | --- | --- | --- | --- | --- | --- | --- | --- | --- | --- | --- | --- |
| 161 | 1.6.6 | **Тестирование** |  | 58d? | 2013-12-18 | 2014-03-07 | 160 | 42d | 0d |  |  | 2648h |
| 162 | 1.6.6.1 | **Функциональное тестирование** |  | 38d? | 2013-12-18 | 2014-02-07 |  | 42d |  |  |  | 2024h |
| 163 | 1.6.6.1.1 | Подготовка ПМИ |  | 5d | 2013-12-18 | 2013-12-24 |  | 42d | 0d |  | Тест Аналитик | 40h |
| 164 | 1.6.6.1.2 | Разработка "сценариев тестирования" |  | 15d | 2013-12-18 | 2014-01-07 |  | 47d | 0d |  | Тест Аналитик | 120h |
| 165 | 1.6.6.1.3 | Разработка модели нагрузки для тестирования |  | 10d | 2013-12-25 | 2014-01-07 | 163 | 85d |  |  | Тест Аналитик | 80h |
| 166 | 1.6.6.1.4 | **Проведение тестирования** |  | 38d? | 2013-12-18 | 2014-02-07 |  | 47d |  |  |  | 1784h |
| 167 | 1.6.6.1.4.1 | **Подготовка среды тестирования** |  | 15d? | 2013-12-18 | 2014-01-07 |  | 47d |  |  |  | 200h |
| 168 | 1.6.6.1.4.1.1 | Разворачивание системы |  | 5d? | 2013-12-18 | 2013-12-24 |  | 47d | 0d |  | Java разработчик | 40h |
| 169 | 1.6.6.1.4.1.2 | Наполнение данными |  | 10d? | 2013-12-25 | 2014-01-07 | 168 | 47d | 0d |  | Java разработчик; Java разработчик6 | 160h |
| 170 | 1.6.6.1.4.2 | Среда тестирования готова | milestone | 0d | 2014-01-07 | 2014-01-07 | 164, 169 | 47d | 0d | finish no earlier than 2012-06-09 |  |  |
| 171 | 1.6.6.1.4.3 | Проведение тестирования |  | 10d | 2014-01-08 | 2014-01-21 | 170 | 47d | 0d |  | Тест Аналитик; Тестировщик [200%] | 240h |
| 172 | 1.6.6.1.4.4 | **Обработка результатов тестирования и внесение изменений в модуль** |  | 15d | 2014-01-20 | 2014-02-07 | 160, 171FS-2d | 47d |  |  |  | 1344h |
| 173 | 1.6.6.1.4.4.1 | Устранение замечаний по результатам функционального тестирования |  | 15d | 2014-01-20 | 2014-02-07 |  | 47d | 0d |  | Java разработчик5; Java разработчик [300%]; Валерий Мацукевич; Java разработчик3; Java разработчик4; Java разработчик2; Java разработчик1; Андрей Цветков | 1200h |
| 174 | 1.6.6.1.4.4.2 | Проверка устранения замечаний |  | 6d | 2014-01-31 | 2014-02-07 | 173FS-6d | 47d | 0d |  | Тест Аналитик; Тестировщик [200%] | 144h |
| 175 | 1.6.6.2 | **Нагрузочное тестирование** |  | 53d | 2013-12-25 | 2014-03-07 | 163 | 42d |  |  |  | 624h |
| 176 | 1.6.6.2.1 | Подготовка автоматизированных сценариев для создания нагрузки |  | 38d | 2013-12-25 | 2014-02-14 |  | 42d | 0d |  | Java разработчик | 304h |
| 177 | 1.6.6.2.2 | Стенд для нагрузочного тестирования подготовлен | milestone | 0d | 2014-01-21 | 2014-01-21 | 171 | 60d | 18d | finish no earlier than 2012-06-09 |  |  |
| 178 | 1.6.6.2.3 | Проведения нагрузочного тестирования |  | 10d | 2014-02-17 | 2014-02-28 | 174, 176, 177 | 42d | 0d |  | Java разработчик; Тест Аналитик; Тестировщик | 240h |
| 179 | 1.6.6.2.4 | Обработка результатов нагрузочного тестирования |  | 5d | 2014-03-03 | 2014-03-07 | 178 | 42d |  |  | Тест Аналитик; Тестировщик | 80h |
| 180 | 1.6.7 | Разработка модулей первой очереди завершена | milestone | 0d | 2014-03-07 | 2014-03-07 | 161 | 42d |  |  |  |  |
| 181 | 1.6.8 | **Подготовка документации** |  | 38d? | 2013-12-18 | 2014-02-07 | 161SS | 62d |  |  |  | 160h |
| 182 | 1.6.8.1 | Разработка "Software Architecture Document" для модулей первой очереди |  | 20d | 2013-12-18 | 2014-01-14 |  | 80d | 18d |  | Технический писатель | 160h |
| 183 | 1.6.8.2 | Документы подготовлены | milestone | 0d | 2014-02-07 | 2014-02-07 | 174, 182 | 62d |  |  |  |  |
